# 资产云上线计划

Schedule from a web Gantt chart, 2025-05-20 to 2025-06-24.
Saturdays and Sundays are off

## Schedule

| ID | WBS | Task | Duration | Start | Finish | Complete |
| --- | --- | --- | --- | --- | --- | --- |
| 2 | 1 | **项目准备** | 2d | 2025-05-20 | 2025-05-21 |  |
| 3 | 1.1 | 项目团队组建 | 2d | 2025-05-20 | 2025-05-21 |  |
| 4 | 2 | **开发需求沟通** | 2d | 2025-05-22 | 2025-05-23 | 85% |
| 5 | 2.1 | **人力云-资产云联动需求** | 1d | 2025-05-22 | 2025-05-22 | 70% |
| 6 | 2.1.1 | 现有资产管理系统和人力相关流程梳理 | 1d | 2025-05-22 | 2025-05-22 | 100% |
| 7 | 2.1.2 | 资产相关人员信息变动范围确认 | 1d | 2025-05-22 | 2025-05-22 | 100% |
| 8 | 2.1.3 | 流程转功能需求确认 | 1d | 2025-05-22 | 2025-05-22 | 10% |
| 9 | 2.2 | **资产云全员自动授予/撤销权限需求** | 1d | 2025-05-23 | 2025-05-23 | 100% |
| 10 | 2.2.1 | 授权范围和边界确认 | 1d | 2025-05-23 | 2025-05-23 | 100% |
| 11 | 2.3 | 开发需求交接和制定开发计划 | 2d | 2025-05-22 | 2025-05-23 | 100% |
| 12 | 3 | **资产数据标准确定** | 16d | 2025-05-26 | 2025-06-16 | 43% |
| 13 | 3.1 | **静态数据标准** | 5d | 2025-05-26 | 2025-05-30 | 85% |
| 14 | 3.1.1 | 权限角色设计 | 1d | 2025-05-26 | 2025-05-26 | 10% |
| 15 | 3.1.2 | 资产实物分类标准 | 1d | 2025-05-26 | 2025-05-26 | 100% |
| 16 | 3.1.3 | 物料分类标准 | 1d | 2025-05-27 | 2025-05-27 | 100% |
| 17 | 3.1.4 | 周转材分类标准 | 1d | 2025-05-28 | 2025-05-28 | 100% |
| 18 | 3.1.5 | 库存和仓库标准 | 1d | 2025-05-29 | 2025-05-29 | 100% |
| 19 | 3.1.6 | 审批流程设计 | 1d | 2025-05-30 | 2025-05-30 | 100% |
| 20 | 3.2 | **资产梳理与导入表单整理** | 10d | 2025-06-03 | 2025-06-16 | 23% |
| 21 | 3.2.1 | 办公资产梳理 | 3d | 2025-06-09 | 2025-06-11 |  |
| 22 | 3.2.2 | 数据中心资产梳理 | 10d | 2025-06-03 | 2025-06-16 | 30% |
| 23 | 4 | **标准功能上线** | 5d | 2025-06-11 | 2025-06-17 | 47% |
| 24 | 4.1 | 环境准备 | 2d | 2025-06-16 | 2025-06-17 | 100% |
| 25 | 4.2 | 正式环境静态数据导入 | 2d | 2025-06-16 | 2025-06-17 | 90% |
| 26 | 4.3 | 资产数据导入 | 3d | 2025-06-11 | 2025-06-13 | 15% |
| 27 | 4.4 | 功能验证 | 1d | 2025-06-13 | 2025-06-13 |  |
| 28 | 4.5 | 标准功能全面推广 | 1d | 2025-06-16 | 2025-06-16 |  |

Notes:
- 8: 需要提供流程图进行二次开发，报领导批准暂时搁置
- 10: 流程中 ，需要单独创建角色，5-22已到王婷婷，【10-B需求申请类】数智化业务需求申请
- 11: 已开发完成，全员资产应用角色对应的服务已授权给Group-All Employees
- 14: 创建各级管理角色：期初资产导入、全局管理员、维修工单操作、办公设备发放，领借用发放
- 15: 已导入
- 16: 已创建
- 17: 已创建
- 18: 已创建
- 19: 全员资产应用已配置
- 22: 已邮件告知各负责人进行IDC资产梳理
- 24: 可以完成资产领用借用管理等功能
- 25: 大部分静态数据已完成录入，待正式使用中验证是否完整和规范

| ID | WBS | Task | Duration | Start | Finish |
| --- | --- | --- | --- | --- | --- |
| 29 | 5 | **数据验证** | 5d | 2025-06-16 | 2025-06-20 |
| 30 | 5.1 | 全员资产盘点 | 5d | 2025-06-16 | 2025-06-20 |
| 31 | 6 | **项目总结归档** | 2d | 2025-06-23 | 2025-06-24 |
| 32 | 6.1 | 整理实施文档 | 1d | 2025-06-23 | 2025-06-23 |
| 33 | 6.2 | 资产云使用指导 | 1d | 2025-06-24 | 2025-06-24 |
